# Bouwplanning v1.0

Schedule from an IFC model, 2027-03-01 to 2028-05-04.
Kantoorgebouw Zuidas

## Schedule

| ID | Activity | Type | Duration | Start | Finish | Predecessors | Planned start | Planned finish | Total float | Free float |
| --- | --- | --- | --- | --- | --- | --- | --- | --- | --- | --- |
| 1 | **1. Voorbereiding** |  | 5d | 2027-03-01 | 2027-03-30 |  | 2027-03-01 | 2027-03-05 | 0d |  |
| 1.1 | Bouwplaats inrichten |  | 8d | 2027-03-01 | 2027-03-10 |  |  |  | 0d |  |
| 1.2 | Omgevingsmanagement |  | 5d | 2027-03-11 | 2027-03-17 | 1.1 | 2027-03-01 | 2027-03-05 | 265d | 0d |
| 1.3 | Verkeersmaatregelen |  | 3d | 2027-03-18 | 2027-03-22 | 1.2 | 2027-03-01 | 2027-03-03 | 265d | 0d |
| 1.4 | Monitoring peilbuizen |  | 3d | 2027-03-23 | 2027-03-25 | 1.3 | 2027-03-01 | 2027-03-03 | 265d | 0d |
| 1.5 | Start bouw | milestone | 0d | 2027-03-30 | 2027-03-30 | 1.4 | 2027-03-01 | 2027-03-01 | 265d |  |
| 2 | **2. Grondwerk & Fundering** |  | 5d | 2027-03-15 | 2027-09-09 |  | 2027-03-01 | 2027-03-05 | 0d |  |
| 2.1 | Damwand profielen |  | 15d | 2027-03-15 | 2027-04-06 | 1.1 SS+10d | 2027-03-01 | 2027-03-19 | 0d |  |
| 2.2 | Bronbemaling |  | 5d | 2027-04-07 | 2027-04-13 | 2.1 | 2027-03-01 | 2027-03-05 | 167d | 0d |
| 2.3 | Ontgraven -2 |  | 12d | 2027-04-14 | 2027-04-30 | 2.2 | 2027-03-01 | 2027-03-16 | 167d | 0d |
| 2.4 | Ontgraven -1 |  | 10d | 2027-05-03 | 2027-05-19 | 2.3 | 2027-03-01 | 2027-03-12 | 167d | 0d |
| 2.5 | Funderingspalen boren |  | 20d | 2027-05-20 | 2027-06-16 | 2.4 | 2027-03-01 | 2027-03-26 | 167d | 0d |
| 2.6 | Funderingsbalken |  | 10d | 2027-06-17 | 2027-06-30 | 2.5 | 2027-03-01 | 2027-03-12 | 167d | 0d |
| 2.7 | Keldervloer P2 |  | 8d | 2027-07-01 | 2027-07-12 | 2.6 | 2027-03-01 | 2027-03-10 | 167d | 0d |
| 2.8 | Keldervloer P1 |  | 8d | 2027-07-13 | 2027-07-22 | 2.7 | 2027-03-01 | 2027-03-10 | 167d | 0d |
| 2.9 | Kelderwanden storten |  | 12d | 2027-07-23 | 2027-08-30 | 2.8 | 2027-03-01 | 2027-03-16 | 167d | 0d |
| 2.10 | Waterdichting kelder |  | 8d | 2027-08-31 | 2027-09-09 | 2.9 | 2027-03-01 | 2027-03-10 | 167d |  |
| 3 | **3. Ruwbouw** |  | 5d | 2027-03-23 | 2027-09-08 |  | 2027-03-01 | 2027-03-05 | 0d |  |
| 3.1 | Begane grond kolommen & vloer |  | 10d | 2027-03-23 | 2027-04-07 | 2.1 SS | 2027-03-01 | 2027-03-12 | 0d |  |
| 3.2 | Verdieping 1 ruwbouw |  | 8d | 2027-04-08 | 2027-04-19 | 3.1 | 2027-03-01 | 2027-03-10 | 0d |  |
| 3.3 | Verdieping 2 ruwbouw |  | 8d | 2027-04-20 | 2027-04-30 | 3.2 | 2027-03-01 | 2027-03-10 | 0d |  |
| 3.4 | Verdieping 3 ruwbouw |  | 8d | 2027-05-03 | 2027-05-14 | 3.3 | 2027-03-01 | 2027-03-10 | 0d |  |
| 3.5 | Verdieping 4 ruwbouw |  | 8d | 2027-05-18 | 2027-05-27 | 3.4 | 2027-03-01 | 2027-03-10 | 0d |  |
| 3.6 | Verdieping 5 ruwbouw |  | 8d | 2027-05-28 | 2027-06-08 | 3.5 | 2027-03-01 | 2027-03-10 | 0d |  |
| 3.7 | Verdieping 6 ruwbouw |  | 8d | 2027-06-09 | 2027-06-18 | 3.6 | 2027-03-01 | 2027-03-10 | 0d |  |
| 3.8 | Verdieping 7 ruwbouw |  | 8d | 2027-06-21 | 2027-06-30 | 3.7 | 2027-03-01 | 2027-03-10 | 0d |  |
| 3.9 | Verdieping 8 ruwbouw |  | 8d | 2027-07-01 | 2027-07-12 | 3.8 | 2027-03-01 | 2027-03-10 | 0d |  |
| 3.10 | Trappenhuis kern beton |  | 20d | 2027-07-08 | 2027-08-25 | 3.9 SS+5d | 2027-03-01 | 2027-03-26 | 0d |  |
| 3.11 | Dakconstructie staal |  | 10d | 2027-08-26 | 2027-09-08 | 3.10 | 2027-03-01 | 2027-03-12 | 0d |  |
| 3.12 | Hoogste punt | milestone | 0d | 2027-09-08 | 2027-09-08 | 3.11 | 2027-03-01 | 2027-03-01 | 168d |  |

| ID | Activity | Type | Duration | Start | Finish | Predecessors | Planned start | Planned finish | Total float | Free float |
| --- | --- | --- | --- | --- | --- | --- | --- | --- | --- | --- |
| 4 | **4. Gevel** |  | 5d | 2027-07-21 | 2027-10-21 |  | 2027-03-01 | 2027-03-05 | 0d |  |
| 4.1 | Vliesgevel montage fase 1 |  | 15d | 2027-07-21 | 2027-08-31 | 3.11 FS-21d | 2027-03-01 | 2027-03-19 | 0d |  |
| 4.2 | Vliesgevel montage fase 2 |  | 15d | 2027-09-01 | 2027-09-21 | 4.1 | 2027-03-01 | 2027-03-19 | 0d |  |
| 4.3 | Vliesgevel montage fase 3 |  | 12d | 2027-09-22 | 2027-10-07 | 4.2 | 2027-03-01 | 2027-03-16 | 0d |  |
| 4.4 | Dakafwerking en installaties |  | 10d | 2027-10-08 | 2027-10-21 | 4.3, 3.11 FF+2d | 2027-03-01 | 2027-03-12 | 0d |  |
| 4.5 | Wind- en waterdicht | milestone | 0d | 2027-10-21 | 2027-10-21 | 4.4 | 2027-03-01 | 2027-03-01 | 137d |  |
| 5 | **5. Installaties** |  | 5d | 2027-10-22 | 2028-02-22 |  | 2027-03-01 | 2027-03-05 | 0d |  |
| 5.1 | Hoofdverdeelruimte elektra |  | 10d | 2027-10-22 | 2027-11-04 | 4.4 | 2027-03-01 | 2027-03-12 | 0d |  |
| 5.2 | Stijgleidingen elektra |  | 12d | 2027-11-05 | 2027-11-22 | 5.1 | 2027-03-01 | 2027-03-16 | 49d | 0d |
| 5.3 | Stijgleidingen W-installatie |  | 12d | 2027-11-10 | 2027-11-25 | 5.2 SS+3d | 2027-03-01 | 2027-03-16 | 49d | 0d |
| 5.4 | Luchtbehandelingskasten |  | 10d | 2027-11-26 | 2027-12-09 | 5.3 | 2027-03-01 | 2027-03-12 | 49d | 0d |
| 5.5 | Kanaalwerk ventilatie |  | 15d | 2027-12-10 | 2027-12-30 | 5.4 | 2027-03-01 | 2027-03-19 | 49d | 0d |
| 5.6 | Sprinklerinstallatie |  | 10d | 2027-12-31 | 2028-01-13 | 5.5 | 2027-03-01 | 2027-03-12 | 49d | 0d |
| 5.7 | Liftinstallatie |  | 20d | 2028-01-14 | 2028-02-10 | 5.6 | 2027-03-01 | 2027-03-26 | 49d | 0d |
| 5.8 | BMS/gebouwbeheer |  | 8d | 2028-02-11 | 2028-02-22 | 5.7 | 2027-03-01 | 2027-03-10 | 49d |  |
| 6 | **6. Afbouw** |  | 5d | 2027-12-30 | 2028-03-22 |  | 2027-03-01 | 2027-03-05 | 0d |  |
| 6.1 | Systeemwanden kantoren |  | 15d | 2027-12-30 | 2028-01-19 | 5.1 SS+49d | 2027-03-01 | 2027-03-19 | 0d |  |
| 6.2 | Verlaagde plafonds |  | 12d | 2028-01-20 | 2028-02-04 | 6.1 | 2027-03-01 | 2027-03-16 | 0d |  |
| 6.3 | Verhoogde vloeren |  | 10d | 2028-02-07 | 2028-02-18 | 6.2 | 2027-03-01 | 2027-03-12 | 0d |  |
| 6.4 | Sanitaire ruimten |  | 8d | 2028-02-21 | 2028-03-01 | 6.3 | 2027-03-01 | 2027-03-10 | 0d |  |
| 6.5 | Keuken/pantry inbouw |  | 5d | 2028-03-02 | 2028-03-08 | 6.4 | 2027-03-01 | 2027-03-05 | 0d |  |
| 6.6 | Schilderwerk & afwerking |  | 10d | 2028-03-09 | 2028-03-22 | 6.5 | 2027-03-01 | 2027-03-12 | 0d |  |
| 7 | **7. Terrein & Oplevering** |  | 5d | 2028-03-23 | 2028-05-04 |  | 2027-03-01 | 2027-03-05 | 0d |  |
| 7.1 | Bestrating & groenvoorziening |  | 10d | 2028-03-23 | 2028-04-05 | 6.6 | 2027-03-01 | 2027-03-12 | 0d |  |
| 7.2 | Inrichting entree & lobby |  | 8d | 2028-04-06 | 2028-04-19 | 7.1 | 2027-03-01 | 2027-03-10 | 0d |  |
| 7.3 | Testen & inregelen |  | 10d | 2028-04-20 | 2028-05-04 | 7.2 | 2027-03-01 | 2027-03-12 | 0d |  |
| 7.4 | Oplevering | milestone | 0d | 2028-05-04 | 2028-05-04 | 7.3 | 2027-03-01 | 2027-03-01 | 0d |  |
