# Bouwplanning v1.0

Schedule from an IFC model, 2027-03-01 to 2027-10-15.
Datacentrum Agriport A7

## Schedule

| ID | Activity | Type | Duration | Start | Finish | Predecessors | Planned start | Planned finish | Total float | Free float |
| --- | --- | --- | --- | --- | --- | --- | --- | --- | --- | --- |
| 1 | **1. Voorbereiding** |  | 5d | 2027-03-01 | 2027-04-01 |  | 2027-03-01 | 2027-03-05 | 0d |  |
| 1.1 | Terrein bouwrijp maken |  | 8d | 2027-03-01 | 2027-03-10 |  |  |  | 0d |  |
| 1.2 | Nutsaansluitingen 10kV |  | 10d | 2027-03-11 | 2027-03-24 | 1.1 | 2027-03-01 | 2027-03-12 | 122d | 0d |
| 1.3 | Security hekwerk tijdelijk |  | 3d | 2027-03-25 | 2027-03-31 | 1.2 | 2027-03-01 | 2027-03-03 | 122d | 0d |
| 1.4 | Start bouw | milestone | 0d | 2027-04-01 | 2027-04-01 | 1.3 | 2027-03-01 | 2027-03-01 | 122d |  |
| 2 | **2. Fundering** |  | 5d | 2027-03-16 | 2027-04-30 |  | 2027-03-01 | 2027-03-05 | 0d |  |
| 2.1 | Heien funderingspalen |  | 10d | 2027-03-16 | 2027-03-31 | 1.1 SS+11d | 2027-03-01 | 2027-03-12 | 0d |  |
| 2.2 | Funderingsbalken |  | 8d | 2027-04-01 | 2027-04-12 | 2.1 | 2027-03-01 | 2027-03-10 | 102d | 0d |
| 2.3 | Vloer op palen storten |  | 8d | 2027-04-13 | 2027-04-22 | 2.2 | 2027-03-01 | 2027-03-10 | 102d | 0d |
| 2.4 | Kabelgoten in vloer |  | 5d | 2027-04-23 | 2027-04-30 | 2.3 | 2027-03-01 | 2027-03-05 | 102d |  |
| 3 | **3. Constructie** |  | 5d | 2027-03-22 | 2027-05-20 |  | 2027-03-01 | 2027-03-05 | 0d |  |
| 3.1 | Prefab betonwanden |  | 12d | 2027-03-22 | 2027-04-08 | 2.1 SS | 2027-03-01 | 2027-03-16 | 0d |  |
| 3.2 | Staalconstructie dak |  | 8d | 2027-04-09 | 2027-04-20 | 3.1 | 2027-03-01 | 2027-03-10 | 0d |  |
| 3.3 | Dakpanelen sandwich |  | 8d | 2027-04-21 | 2027-05-03 | 3.2 | 2027-03-01 | 2027-03-10 | 0d |  |
| 3.4 | Verhoogde computervloer |  | 10d | 2027-05-04 | 2027-05-20 | 3.3 | 2027-03-01 | 2027-03-12 | 0d |  |
| 3.5 | Hoogste punt | milestone | 0d | 2027-05-20 | 2027-05-20 | 3.4 | 2027-03-01 | 2027-03-01 | 91d |  |
| 4 | **4. Gevel & Waterdicht** |  | 5d | 2027-05-10 | 2027-06-07 |  | 2027-03-01 | 2027-03-05 | 0d |  |
| 4.1 | Gevelisolatie en beplating |  | 10d | 2027-05-10 | 2027-05-24 | 3.4 FS-8d | 2027-03-01 | 2027-03-12 | 0d |  |
| 4.2 | Laadperrons en deuren |  | 5d | 2027-05-25 | 2027-05-31 | 4.1 | 2027-03-01 | 2027-03-05 | 0d |  |
| 4.3 | Waterdichting dak |  | 5d | 2027-06-01 | 2027-06-07 | 4.2, 3.4 FF+2d | 2027-03-01 | 2027-03-05 | 0d |  |
| 4.4 | Wind- en waterdicht | milestone | 0d | 2027-06-07 | 2027-06-07 | 4.3 | 2027-03-01 | 2027-03-01 | 79d |  |
| 5 | **5. Elektra & Koeling** |  | 5d | 2027-06-08 | 2027-09-22 |  | 2027-03-01 | 2027-03-05 | 0d |  |
| 5.1 | Transformatoren 10kV |  | 8d | 2027-06-08 | 2027-06-17 | 4.3 | 2027-03-01 | 2027-03-10 | 0d |  |
| 5.2 | UPS systemen |  | 10d | 2027-06-18 | 2027-07-01 | 5.1 | 2027-03-01 | 2027-03-12 | 17d | 0d |
| 5.3 | Noodstroomgeneratoren |  | 8d | 2027-07-02 | 2027-07-13 | 5.2 | 2027-03-01 | 2027-03-10 | 17d | 0d |
| 5.4 | Hoofdverdeling en PDU |  | 10d | 2027-07-14 | 2027-08-17 | 5.3 | 2027-03-01 | 2027-03-12 | 17d | 0d |
| 5.5 | Koelmachines |  | 10d | 2027-08-18 | 2027-08-31 | 5.4 | 2027-03-01 | 2027-03-12 | 17d | 0d |
| 5.6 | CRAH units datahallen |  | 8d | 2027-09-01 | 2027-09-10 | 5.5 | 2027-03-01 | 2027-03-10 | 17d | 0d |
| 5.7 | Koeltorens buiten |  | 8d | 2027-09-13 | 2027-09-22 | 5.6 | 2027-03-01 | 2027-03-10 | 17d |  |

| ID | Activity | Type | Duration | Start | Finish | Predecessors | Planned start | Planned finish | Total float |
| --- | --- | --- | --- | --- | --- | --- | --- | --- | --- |
| 6 | **6. ICT & Beveiliging** |  | 5d | 2027-07-21 | 2027-09-24 |  | 2027-03-01 | 2027-03-05 | 0d |
| 6.1 | Glasvezel inkomend |  | 5d | 2027-07-21 | 2027-08-17 | 5.1 SS+31d | 2027-03-01 | 2027-03-05 | 0d |
| 6.2 | Patchpanelen en bekabeling |  | 8d | 2027-08-18 | 2027-08-27 | 6.1 | 2027-03-01 | 2027-03-10 | 0d |
| 6.3 | Brandblussysteem gas |  | 5d | 2027-08-30 | 2027-09-03 | 6.2 | 2027-03-01 | 2027-03-05 | 0d |
| 6.4 | Toegangscontrole biometrisch |  | 5d | 2027-09-06 | 2027-09-10 | 6.3 | 2027-03-01 | 2027-03-05 | 0d |
| 6.5 | CCTV systeem |  | 5d | 2027-09-13 | 2027-09-17 | 6.4 | 2027-03-01 | 2027-03-05 | 0d |
| 6.6 | BMS monitoring |  | 5d | 2027-09-20 | 2027-09-24 | 6.5 | 2027-03-01 | 2027-03-05 | 0d |
| 7 | **7. Oplevering** |  | 5d | 2027-09-27 | 2027-10-15 |  | 2027-03-01 | 2027-03-05 | 0d |
| 7.1 | Testen failover scenario |  | 5d | 2027-09-27 | 2027-10-01 | 6.6 | 2027-03-01 | 2027-03-05 | 0d |
| 7.2 | Terreinafwerking |  | 5d | 2027-10-04 | 2027-10-08 | 7.1 | 2027-03-01 | 2027-03-05 | 0d |
| 7.3 | Certificering Tier III |  | 5d | 2027-10-11 | 2027-10-15 | 7.2 | 2027-03-01 | 2027-03-05 | 0d |
| 7.4 | Oplevering | milestone | 0d | 2027-10-15 | 2027-10-15 | 7.3 | 2027-03-01 | 2027-03-01 | 0d |
