# Bouwplanning v1.0

Schedule from an IFC model.
Zorgcentrum De Linde

## Schedule

| ID | Activity | Predecessors |
| --- | --- | --- |
| 1 | **1. Voorbereiding** |  |
| 1.1 | Bouwplaats inrichten |  |
| 1.2 | Grondonderzoek aanvullend | 1.1 |
| 1.3 | Bomen kappen en verplanten | 1.2 |
| 1.4 | Start bouw | 1.3 |
| 2 | **2. Fundering** |  |
| 2.1 | Heien funderingspalen | 1.4 |
| 2.2 | Funderingsbalken | 2.1 |
| 2.3 | Riolering en grondleidingen | 2.2 |
| 2.4 | Begane grondvloer storten | 2.3 |
| 3 | **3. Ruwbouw** |  |
| 3.1 | Begane grond draagstructuur | 2.4 |
| 3.2 | Verdieping 1 beton | 3.1 |
| 3.3 | Verdieping 2 beton | 3.2 |
| 3.4 | Metselwerk gevels | 3.3 |
| 3.5 | Binnenwanden kalkzandsteen | 3.4 |
| 3.6 | Dakconstructie | 3.5 |
| 3.7 | Hoogste punt | 3.6 |
| 4 | **4. Gevel & Dak** |  |
| 4.1 | Gevelisolatie en afwerking | 3.7 |
| 4.2 | Kozijnen en puien | 4.1 |
| 4.3 | Dakisolatie en bedekking | 4.2 |
| 4.4 | Dakranden en hemelwaterafvoer | 4.3 |
| 4.5 | Wind- en waterdicht | 4.4 |

| ID | Activity | Predecessors |
| --- | --- | --- |
| 5 | **5. Installaties** |  |
| 5.1 | Elektra hoofdverdeling | 4.5 |
| 5.2 | Noodstroomvoorziening | 5.1 |
| 5.3 | Zuurstof en medische gassen | 5.2 |
| 5.4 | CV en koeling | 5.3 SS |
| 5.5 | Ventilatie met HEPA filters | 5.4 |
| 5.6 | Sprinkler en BMI | 5.5 |
| 5.7 | Liftinstallatie | 5.6 |
| 5.8 | Zuster-oproepsysteem | 5.7 |
| 5.9 | ICT bekabeling | 5.8 |
| 6 | **6. Afbouw** |  |
| 6.1 | Scheidingswanden | 5.9 |
| 6.2 | Plafonds en wanden afwerken | 6.1 |
| 6.3 | Tegelwerk natte ruimten | 6.2 |
| 6.4 | Dekvloeren en vloerafwerking | 6.3 |
| 6.5 | Schilderwerk | 6.4 |
| 6.6 | Keukens en pantry | 6.5 |
| 6.7 | Sanitair plaatsen | 6.6 |
| 7 | **7. Oplevering** |  |
| 7.1 | Buitenterrein aanleggen | 6.7 |
| 7.2 | Inrichting kamers | 7.1 |
| 7.3 | Testen installaties | 7.2 |
| 7.4 | Oplevering | 7.3 |
