# Construction schedule v1.0

Schedule from an IFC model, 2027-03-01 to 2027-05-04.
Refurbishment & Extension of a Family Home

## Schedule

| ID | Activity | Type | Duration | Start | Finish | Predecessors | Planned start | Planned finish | Total float | Free float |
| --- | --- | --- | --- | --- | --- | --- | --- | --- | --- | --- |
| 1 | Start of refurbishment | milestone | 0d | 2027-03-01 | 2027-03-01 |  |  |  | 4d | 0d |
| 2 | **1. Preparation** |  | 5d | 2027-03-01 | 2027-03-11 |  | 2027-03-01 | 2027-03-05 | 0d |  |
| 2.1 | Set up site |  | 2d | 2027-03-01 | 2027-03-02 | 1 |  |  | 4d |  |
| 2.2 | Demolish existing extension |  | 3d | 2027-03-09 | 2027-03-11 | 2.1 | 2027-03-01 | 2027-03-03 | 0d |  |
| 3 | **2. Foundations & structure** |  | 5d | 2027-03-12 | 2027-04-06 |  | 2027-03-01 | 2027-03-05 | 0d |  |
| 3.1 | Earthworks for extension |  | 3d | 2027-03-12 | 2027-03-16 | 2.2 | 2027-03-01 | 2027-03-03 | 0d |  |
| 3.2 | Extension foundations |  | 4d | 2027-03-17 | 2027-03-22 | 3.1 | 2027-03-01 | 2027-03-04 | 0d |  |
| 3.3 | Pour ground floor slab |  | 3d | 2027-03-23 | 2027-03-25 | 3.2 | 2027-03-01 | 2027-03-03 | 0d |  |
| 3.4 | Build masonry walls |  | 6d | 2027-03-30 | 2027-04-06 | 3.3 | 2027-03-01 | 2027-03-08 | 0d |  |
| 3.5 | Install roof structure |  | 4d | 2027-04-01 | 2027-04-06 | 3.4 SS+2d | 2027-03-01 | 2027-03-04 | 0d |  |
| 4 | **3. Fit-out** |  | 5d | 2027-04-07 | 2027-04-30 |  | 2027-03-01 | 2027-03-05 | 0d |  |
| 4.1 | Apply roofing |  | 3d | 2027-04-07 | 2027-04-09 | 3.5 | 2027-03-01 | 2027-03-03 | 0d |  |
| 4.2 | Install window frames |  | 4d | 2027-04-12 | 2027-04-15 | 4.1 | 2027-03-01 | 2027-03-04 | 0d |  |
| 4.3 | Plastering |  | 5d | 2027-04-16 | 2027-04-22 | 4.2 | 2027-03-01 | 2027-03-05 | 0d |  |
| 4.4 | Tiling |  | 4d | 2027-04-23 | 2027-04-29 | 4.3 | 2027-03-01 | 2027-03-04 | 0d |  |
| 4.5 | Painting |  | 3d | 2027-04-28 | 2027-04-30 | 4.3, 4.4 FF+1d | 2027-03-01 | 2027-03-03 | 0d |  |
| 5 | **4. Handover** |  | 5d | 2027-05-03 | 2027-05-04 |  | 2027-03-01 | 2027-03-05 | 0d |  |
| 5.1 | Final cleaning |  | 1d | 2027-05-03 | 2027-05-03 | 4.5 | 2027-03-01 | 2027-03-01 | 0d |  |
| 5.2 | Handover inspection | milestone | 0d | 2027-05-03 | 2027-05-03 | 5.1 | 2027-03-01 | 2027-03-01 | 0d |  |
| 5.3 | Final handover with the occupant |  | 1d | 2027-05-04 | 2027-05-04 | 5.2 | 2027-03-01 | 2027-03-01 | 0d |  |

Notes:
- 5.2: Mandatory handover inspection; the deadline has ample margin (no conflict).
